# 2021_C7_FitDiary_Fasano-Spinelli_V3.0

Schedule from MS Project, 2021-11-05 to 2022-01-24, costs in €, A marks actual dates.

## Calendars

- Standard: Mon-Fri 09:00-13:00, 14:00-18:00; Sat-Sun off.

## Resources

| Resource | Rate |
| --- | --- |
| Rebecca Di Matteo | 35 |
| Ilaria De Sio | 35 |
| Antonio Trapanese | 35 |
| Leonardo Monaco | 35 |
| Davide La Gamba | 35 |
| Daniele Giaquinto | 35 |
| Daniele De Marco | 35 |
| Simone Spera | 35 |

## Schedule

| ID | WBS | Task | Type | Duration | Start | Finish | Predecessors | Complete | Constraint | Resources | Work | Actual work | Cost | Actual cost |
| --- | --- | --- | --- | --- | --- | --- | --- | --- | --- | --- | --- | --- | --- | --- |
| 1 | 1 | **FitDiary** |  | 56d? | 2021-11-05 A | 2022-01-24 A |  | 100% |  |  | 396h | 396h | 13,860 | 13,860 |
| 2 | 1.1 | **RAD Requirements Specification** |  | 10d | 2021-11-05 A | 2021-11-18 A |  | 100% |  |  | 49.5h | 49.5h | 1,732.5 | 1,732.5 |
| 3 | 1.1.1 | Introduzione |  | 2d | 2021-11-05 A | 2021-11-08 A |  | 100% | start no earlier than 2021-11-05 | Rebecca Di Matteo [9.4%]; Simone Spera [9.4%] | 1.5h | 1.5h | 52.5 | 52.5 |
| 4 | 1.1.2 | Sistema Corrente |  | 2d | 2021-11-05 A | 2021-11-08 A |  | 100% | start no earlier than 2021-11-05 | Antonio Trapanese [6.2%]; Daniele De Marco [6.2%] | 1h | 1h | 35 | 35 |
| 5 | 1.1.3 | **Panoramica sistema proposto** |  | 2d | 2021-11-05 A | 2021-11-08 A |  | 100% |  |  | 2h | 2h | 70 | 70 |
| 6 | 1.1.3.1 | Attori |  | 2d | 2021-11-05 A | 2021-11-08 A |  | 100% | start no earlier than 2021-11-05 | Ilaria De Sio [6.2%]; Leonardo Monaco [6.2%] | 1h | 1h | 35 | 35 |
| 7 | 1.1.3.2 | Activity Diagram |  | 2d | 2021-11-05 A | 2021-11-08 A |  | 100% | start no earlier than 2021-11-05 | Daniele Giaquinto [3.1%]; Davide La Gamba [3.1%] | 1h | 1h | 35 | 35 |
| 8 | 1.1.4 | Scenari |  | 2d | 2021-11-09 A | 2021-11-10 A | 3, 4, 5 | 100% |  | Antonio Trapanese; Daniele De Marco; Daniele Giaquinto; Davide La Gamba; Ilaria De Sio; Leonardo Monaco; Rebecca Di Matteo; Simone Spera | 18h | 18h | 630 | 630 |
| 9 | 1.1.5 | Requisiti Funzionali |  | 2d | 2021-11-11 A | 2021-11-12 A | 8 | 100% |  | Daniele Giaquinto; Davide La Gamba; Ilaria De Sio; Leonardo Monaco; Rebecca Di Matteo; Simone Spera; Antonio Trapanese; Daniele De Marco | 10h | 10h | 350 | 350 |
| 10 | 1.1.6 | Requisiti Non Funzionali |  | 1d | 2021-11-15 A | 2021-11-15 A | 9 | 100% |  | Daniele Giaquinto [25%]; Davide La Gamba [25%]; Ilaria De Sio [25%]; Leonardo Monaco [25%] | 2h | 2h | 70 | 70 |
| 11 | 1.1.7 | Mock-ups |  | 0.5d | 2021-11-15 A | 2021-11-15 A | 9 | 100% |  | Antonio Trapanese [50%]; Daniele De Marco [50%]; Rebecca Di Matteo [50%]; Simone Spera [50%] | 2h | 2h | 70 | 70 |
| 12 | 1.1.8 | Use Case |  | 2d | 2021-11-16 A | 2021-11-17 A | 9, 10 | 100% |  | Antonio Trapanese [75%]; Daniele De Marco [75%]; Daniele Giaquinto [75%]; Davide La Gamba [75%]; Ilaria De Sio [75%]; Leonardo Monaco [75%]; Rebecca Di Matteo [75%]; Simone Spera [75%] | 12h | 12h | 420 | 420 |
| 13 | 1.1.9 | Navigational Path |  | 1d | 2021-11-18 A | 2021-11-18 A | 12 | 100% |  | Ilaria De Sio [12.5%]; Simone Spera [12.5%] | 1h | 1h | 35 | 35 |
| 14 | 1.2 | **RAD Analysis Model** |  | 5d | 2021-11-22 A | 2021-11-26 A | 2 | 100% |  |  | 19.5h | 19.5h | 682.5 | 682.5 |
| 15 | 1.2.1 | Object Model |  | 0.88d | 2021-11-22 A | 2021-11-22 A |  | 100% |  | Daniele De Marco; Daniele Giaquinto; Davide La Gamba; Leonardo Monaco | 7h | 7h | 245 | 245 |
| 16 | 1.2.2 | State-Chart |  | 1d | 2021-11-22 A | 2021-11-22 A |  | 100% |  | Antonio Trapanese; Rebecca Di Matteo; Simone Spera | 1h | 1h | 35 | 35 |
| 17 | 1.2.3 | Object Diagram |  | 1.33d | 2021-11-23 A | 2021-11-24 A | 15 | 100% |  | Antonio Trapanese; Davide La Gamba; Leonardo Monaco; Rebecca Di Matteo | 2h | 2h | 70 | 70 |
| 18 | 1.2.4 | Class Diagram |  | 2d | 2021-11-23 A | 2021-11-24 A | 15 | 100% |  | Daniele De Marco; Daniele Giaquinto; Ilaria De Sio; Simone Spera | 3.5h | 3.5h | 122.5 | 122.5 |
| 19 | 1.2.5 | Sequence Diagram |  | 4d | 2021-11-23 A | 2021-11-26 A | 15 | 100% |  | Antonio Trapanese; Daniele De Marco; Daniele Giaquinto; Davide La Gamba; Ilaria De Sio; Leonardo Monaco; Rebecca Di Matteo; Simone Spera | 6h | 6h | 210 | 210 |
| 20 | 1.2.6 | RAD Finished | milestone, manual | 0d | 2021-11-26 A | 2021-11-26 A |  | 100% |  |  |  |  |  |  |
| 21 | 1.3 | **System Design Document** |  | 10d | 2021-11-29 A | 2021-12-10 A | 14 | 100% |  |  | 45h | 45h | 1,575 | 1,575 |
| 22 | 1.3.1 | Design Goals |  | 1d | 2021-11-29 A | 2021-11-29 A |  | 100% |  | Antonio Trapanese; Daniele De Marco; Daniele Giaquinto; Davide La Gamba; Simone Spera; Rebecca Di Matteo | 3h | 3h | 105 | 105 |
| 23 | 1.3.2 | Design Trade Off |  | 1d | 2021-11-30 A | 2021-11-30 A | 22 | 100% |  | Antonio Trapanese; Daniele De Marco; Daniele Giaquinto; Davide La Gamba; Ilaria De Sio; Leonardo Monaco; Rebecca Di Matteo; Simone Spera | 3h | 3h | 105 | 105 |
| 24 | 1.3.3 | Architettura Sistema Corrente |  | 1d | 2021-11-29 A | 2021-11-29 A |  | 100% |  | Ilaria De Sio; Leonardo Monaco | 1h | 1h | 35 | 35 |

| ID | WBS | Task | Type | Duration | Start | Finish | Predecessors | Complete | Resources | Work | Actual work | Cost | Actual cost |
| --- | --- | --- | --- | --- | --- | --- | --- | --- | --- | --- | --- | --- | --- |
| 25 | 1.3.4 | **Architettura Sistema Proposto** |  | 3d | 2021-12-01 A | 2021-12-03 A | 23 | 100% |  | 28h | 28h | 980 | 980 |
| 26 | 1.3.4.1 | Decomposizione in Sottosistemi |  | 1d | 2021-12-01 A | 2021-12-01 A |  | 100% | Daniele De Marco; Daniele Giaquinto; Antonio Trapanese | 3h | 3h | 105 | 105 |
| 27 | 1.3.4.2 | Mapping Hardware/Software |  | 1d | 2021-12-01 A | 2021-12-01 A |  | 100% | Leonardo Monaco [6.2%]; Rebecca Di Matteo [6.2%]; Simone Spera [6.2%] | 1h | 1h | 35 | 35 |
| 28 | 1.3.4.3 | Gestione Dati Persistenti |  | 1d | 2021-12-02 A | 2021-12-02 A | 26 | 100% | Antonio Trapanese; Daniele De Marco; Daniele Giaquinto; Davide La Gamba; Ilaria De Sio; Leonardo Monaco; Rebecca Di Matteo; Simone Spera | 17h | 17h | 595 | 595 |
| 29 | 1.3.4.4 | Controllo Accessi e Sicurezza |  | 1d | 2021-12-03 A | 2021-12-03 A | 28 | 100% | Simone Spera; Antonio Trapanese; Daniele De Marco | 0.5h | 0.5h | 17.5 | 17.5 |
| 30 | 1.3.4.5 | Controllo flusso globale sistema |  | 0.5d | 2021-12-03 A | 2021-12-03 A | 28 | 100% | Leonardo Monaco; Rebecca Di Matteo | 0.5h | 0.5h | 17.5 | 17.5 |
| 31 | 1.3.4.6 | Boundary Conditions |  | 1d | 2021-12-01 A | 2021-12-01 A |  | 100% | Davide La Gamba; Ilaria De Sio | 2h | 2h | 70 | 70 |
| 32 | 1.3.4.7 | Servizi dei sottosistemi |  | 1d | 2021-12-03 A | 2021-12-03 A | 28 | 100% | Ilaria De Sio; Antonio Trapanese; Daniele De Marco; Leonardo Monaco; Rebecca Di Matteo; Simone Spera; Daniele Giaquinto; Davide La Gamba | 4h | 4h | 140 | 140 |
| 33 | 1.3.5 | SSD Finished | milestone, manual | 0d | 2021-12-06 A | 2021-12-06 A | 25 | 100% |  |  |  |  |  |
| 34 | 1.3.6 | Test Case Documents |  | 4d | 2021-12-07 A | 2021-12-10 A | 25 | 100% | Antonio Trapanese; Daniele De Marco; Daniele Giaquinto; Davide La Gamba; Ilaria De Sio; Leonardo Monaco; Rebecca Di Matteo; Simone Spera | 10h | 10h | 350 | 350 |
| 35 | 1.3.7 | First Review | milestone | 0d | 2021-12-10 A | 2021-12-10 A | 34 | 100% |  |  |  |  |  |
| 36 | 1.4 | **Object Diagram Document** |  | 4d? | 2021-12-10 A | 2021-12-17 A | 21 | 100% |  | 28h | 28h | 980 | 980 |
| 37 | 1.4.1 | Object Design Goals |  | 1d | 2021-12-10 A | 2021-12-13 A |  | 100% | Daniele De Marco; Simone Spera | 1h | 1h | 35 | 35 |
| 38 | 1.4.2 | Object Design Trade-Off |  | 1d | 2021-12-13 A | 2021-12-13 A |  | 100% | Antonio Trapanese; Rebecca Di Matteo | 2h | 2h | 70 | 70 |
| 39 | 1.4.3 | Off-the shelf |  | 1d | 2021-12-13 A | 2021-12-13 A |  | 100% | Daniele Giaquinto; Leonardo Monaco | 2h | 2h | 70 | 70 |
| 40 | 1.4.4 | Linee guida Doc Interfacce |  | 1d | 2021-12-13 A | 2021-12-13 A |  | 100% | Davide La Gamba; Ilaria De Sio | 2h | 2h | 70 | 70 |
| 41 | 1.4.5 | Design Pattern |  | 1d | 2021-12-14 A | 2021-12-14 A | 38 | 100% | Antonio Trapanese; Daniele De Marco; Daniele Giaquinto; Davide La Gamba; Ilaria De Sio; Leonardo Monaco; Rebecca Di Matteo; Simone Spera | 8h | 8h | 280 | 280 |
| 42 | 1.4.6 | Packages |  | 1d | 2021-12-15 A | 2021-12-15 A | 41 | 100% | Antonio Trapanese; Daniele De Marco; Daniele Giaquinto; Davide La Gamba; Ilaria De Sio; Leonardo Monaco; Rebecca Di Matteo; Simone Spera | 6h | 6h | 210 | 210 |
| 43 | 1.4.7 | Interfacce classi |  | 1d | 2021-12-16 A | 2021-12-16 A | 42 | 100% | Daniele De Marco; Davide La Gamba; Antonio Trapanese; Ilaria De Sio | 2h | 2h | 70 | 70 |
| 44 | 1.4.8 | Class Diagram |  | 1d? | 2021-12-16 A | 2021-12-16 A | 42 | 100% | Daniele Giaquinto; Leonardo Monaco; Rebecca Di Matteo; Simone Spera | 5h | 5h | 175 | 175 |
| 45 | 1.4.9 | ODD Finished | milestone, manual | 0d | 2021-12-17 A | 2021-12-17 A | 44 | 100% |  |  |  |  |  |
| 46 | 1.5 | **Source Code** |  | 19d | 2021-12-17 A | 2022-01-12 A | 36 | 100% |  | 175h | 175h | 6,125 | 6,125 |
| 47 | 1.5.1 | Database |  | 1d | 2021-12-17 A | 2021-12-17 A |  | 100% | Antonio Trapanese; Daniele De Marco; Daniele Giaquinto; Davide La Gamba; Ilaria De Sio; Leonardo Monaco; Rebecca Di Matteo; Simone Spera | 3h | 3h | 105 | 105 |
| 48 | 1.5.2 | Backend |  | 18d | 2021-12-20 A | 2022-01-12 A | 47 | 100% | Daniele De Marco; Davide La Gamba; Rebecca Di Matteo; Antonio Trapanese | 86h | 86h | 3,010 | 3,010 |
| 49 | 1.5.3 | Frontend |  | 18d | 2021-12-20 A | 2022-01-12 A | 47 | 100% | Ilaria De Sio; Leonardo Monaco; Simone Spera; Daniele Giaquinto | 86h | 86h | 3,010 | 3,010 |
| 50 | 1.5.4 | Applicativo Finished with Javadoc | milestone | 0d | 2022-01-12 A | 2022-01-12 A | 49 | 100% |  |  |  |  |  |

| ID | WBS | Task | Type | Duration | Start | Finish | Predecessors | Complete | Resources | Work | Actual work | Cost | Actual cost |
| --- | --- | --- | --- | --- | --- | --- | --- | --- | --- | --- | --- | --- | --- |
| 51 | 1.6 | **Testing** |  | 25d | 2021-12-17 A | 2022-01-21 A | 36 | 100% |  | 72h | 72h | 2,520 | 2,520 |
| 52 | 1.6.1 | Test Unità |  | 18d | 2021-12-17 A | 2022-01-11 A |  | 100% | Antonio Trapanese [15.3%]; Daniele De Marco [15.3%]; Davide La Gamba [15.3%]; Rebecca Di Matteo [15.3%] | 22h | 22h | 770 | 770 |
| 53 | 1.6.2 | Test Integrazione |  | 18d | 2021-12-17 A | 2022-01-11 A |  | 100% | Antonio Trapanese [15.3%]; Daniele De Marco [15.3%]; Daniele Giaquinto [15.3%]; Davide La Gamba [15.3%]; Ilaria De Sio [15.3%]; Leonardo Monaco [15.3%]; Rebecca Di Matteo [15.3%]; Simone Spera [15.3%] | 22h | 22h | 770 | 770 |
| 54 | 1.6.3 | Test Sistema |  | 4d | 2022-01-13 A | 2022-01-18 A | 46 | 100% | Daniele Giaquinto [68.8%]; Ilaria De Sio [68.8%]; Leonardo Monaco [68.8%]; Simone Spera [68.8%] | 22h | 22h | 770 | 770 |
| 55 | 1.6.4 | Test Summary Report |  | 2d | 2022-01-18 A | 2022-01-20 A | 54 | 100% | Davide La Gamba; Rebecca Di Matteo; Antonio Trapanese; Daniele De Marco | 4h | 4h | 140 | 140 |
| 56 | 1.6.5 | Test Incident Report |  | 2d | 2022-01-18 A | 2022-01-20 A | 54 | 100% | Leonardo Monaco; Simone Spera; Ilaria De Sio; Daniele Giaquinto | 2h | 2h | 70 | 70 |
| 57 | 1.6.6 | Test Reports Finished | milestone, manual | 0d | 2022-01-21 A | 2022-01-21 A | 55, 56 | 100% |  |  |  |  |  |
| 58 | 1.7 | **Manuali** |  | 0.12d | 2022-01-21 A | 2022-01-21 A | 51 | 100% |  | 7h | 7h | 245 | 245 |
| 59 | 1.7.1 | Manuale Utente |  | 0.09d | 2022-01-21 A | 2022-01-21 A |  | 100% | Simone Spera; Daniele Giaquinto; Leonardo Monaco; Ilaria De Sio | 3h | 3h | 105 | 105 |
| 60 | 1.7.2 | Manuale Installazione |  | 0.12d | 2022-01-21 A | 2022-01-21 A |  | 100% | Daniele De Marco; Davide La Gamba; Rebecca Di Matteo; Antonio Trapanese | 4h | 4h | 140 | 140 |
| 61 | 1.7.3 | Manuali Finished | milestone, manual | 0d | 2022-01-21 A | 2022-01-21 A |  | 100% |  |  |  |  |  |
| 62 | 1.8 | Final Release | milestone, manual | 0d | 2022-01-24 A | 2022-01-24 A | 58 | 100% |  |  |  |  |  |
